# Lịch sách dành cho trẻ em

How a schedule from MS Project changed from version to version. A marks actual dates.

## Version 1 (saved 2025-09-22, file Advanced Tracking A_Start.mpp)

| ID | WBS | Task | Duration | Start | Finish | Predecessors | Total float | Constraint |
| --- | --- | --- | --- | --- | --- | --- | --- | --- |
| 1 | 1 | **Họp nhân viên biên tập** | 60.12d | 2012-04-09 | 2012-07-02 |  | 888.75d |  |
| 2 |  | Editorial staff meeting 1 | 1h | 2012-04-09 | 2012-04-09 |  | 948.75d | start no earlier than 2012-04-09 |
| 3 |  | Editorial staff meeting 2 | 1h | 2012-04-16 | 2012-04-16 |  | 943.75d | start no earlier than 2012-04-16 |
| 4 |  | Editorial staff meeting 3 | 1h | 2012-04-23 | 2012-04-23 |  | 938.75d | start no earlier than 2012-04-23 |
| 5 |  | Editorial staff meeting 4 | 1h | 2012-04-30 | 2012-04-30 |  | 933.75d | start no earlier than 2012-04-30 |
| 6 |  | Editorial staff meeting 5 | 1h | 2012-05-07 | 2012-05-07 |  | 928.75d | start no earlier than 2012-05-07 |
| 7 |  | Editorial staff meeting 6 | 1h | 2012-05-14 | 2012-05-14 |  | 923.75d | start no earlier than 2012-05-14 |
| 8 |  | Editorial staff meeting 7 | 1h | 2012-05-21 | 2012-05-21 |  | 918.75d | start no earlier than 2012-05-21 |
| 9 |  | Editorial staff meeting 8 | 1h | 2012-05-28 | 2012-05-28 |  | 913.75d | start no earlier than 2012-05-28 |
| 10 |  | Editorial staff meeting 9 | 1h | 2012-06-04 | 2012-06-04 |  | 908.75d | start no earlier than 2012-06-04 |
| 11 |  | Editorial staff meeting 10 | 1h | 2012-06-11 | 2012-06-11 |  | 903.75d | start no earlier than 2012-06-11 |
| 12 |  | Editorial staff meeting 11 | 1h | 2012-06-18 | 2012-06-18 |  | 898.75d | start no earlier than 2012-06-18 |
| 13 |  | Editorial staff meeting 12 | 1h | 2012-06-25 | 2012-06-25 |  | 893.75d | start no earlier than 2012-06-25 |
| 14 |  | Editorial staff meeting 13 | 1h | 2012-07-02 | 2012-07-02 |  | 888.75d | start no earlier than 2012-07-02 |
| 15 | 2 | **Sự tiếp nhận** | 35.5d | 2015-04-06 | 2015-05-25 |  | 0d |  |
| 16 |  | Nhận bản thảo | 0d | 2015-04-06 | 2015-04-06 |  | 0d |  |
| 17 |  | Biên tập nội dung | 15d | 2015-04-06 | 2015-04-30 | 16 | 0d |  |
| 18 |  | Đánh giá tác phẩm gốc | 10.25d | 2015-04-23 | 2015-05-07 | 17FS-5d | 0d |  |
| 19 |  | Đánh giá của tác giả về nội dung biên tập | 12d | 2015-05-07 | 2015-05-25 | 17, 18 | 0d |  |
| 20 |  | Bàn giao cho bộ phận biên tập | 0d | 2015-05-25 | 2015-05-25 | 19 | 0d |  |
| 21 | 3 | **Biên tập** | 29.12d | 2015-05-25 | 2015-07-03 | 15 | 0d |  |
| 22 |  | Sắp xếp bản thảo cho bản sao | 5.12d | 2015-05-25 | 2015-06-01 |  | 0d |  |
| 23 |  | Bản sao | 11.25d | 2015-06-01 | 2015-06-16 | 22 | 0d |  |
| 24 |  | Đánh giá tác giả về bản sao | 10d | 2015-06-16 | 2015-06-30 | 23 | 0d |  |
| 25 |  | Kết hợp bản sao | 5.12d | 2015-06-26 | 2015-07-03 | 24FS-2.5% | 0d |  |
| 26 |  | Bàn giao cho bộ phận sản xuất | 0d | 2015-07-03 | 2015-07-03 | 25 | 0d |  |
| 27 | 4 | **Thiết kế và sản xuất** | 58.25d | 2015-07-03 | 2015-09-23 | 21 | 0d |  |
| 28 |  | Thiết lập trang | 15d | 2015-07-03 | 2015-07-24 |  | 0d |  |
| 29 |  | Dàn trang | 15.25d | 2015-07-03 | 2015-07-24 | 28SS | 0d |  |
| 30 | 4.3 | **Thiết kế minh họa nội dung** | 30d | 2015-07-24 | 2015-09-04 | 29 | 0d |  |
| 31 |  | Duyệt trang lần 1 | 10d | 2015-07-24 | 2015-08-07 |  | 0d | start no earlier than 2015-07-17 |
| 32 |  | Hiệu đính và lập chỉ mục | 10d | 2015-08-07 | 2015-08-21 | 31 | 0d |  |
| 33 |  | Tích hợp góp ý duyệt trang lần 1 | 0d | 2015-08-21 | 2015-08-21 | 32 | 0d |  |
| 34 |  | Gửi trang đã hiệu đính cho Sản Xuất | 5d | 2015-08-21 | 2015-08-28 | 33 | 0d |  |
| 35 |  | Nhập chỉnh sửa trang và chỉ mục | 5d | 2015-08-28 | 2015-09-04 | 34 | 0d |  |
| 36 | 4.4 | **Thiết kế bìa** | 13d | 2015-09-04 | 2015-09-23 |  | 0d |  |
| 37 |  | Duyệt trang lần 2 | 6.5d | 2015-09-04 | 2015-09-15 | 35 | 0d |  |
| 38 |  | Hiệu đính và duyệt | 0d | 2015-09-15 | 2015-09-15 | 37 | 0d |  |
| 39 |  | Gửi trang đã hiệu đính cho Sản Xuất | 5d | 2015-09-16 | 2015-09-23 | 38 | 0d |  |
| 40 | 4.5 | **Duyệt lần cuối** | 10d | 2015-09-04 | 2015-09-18 | 30 | 3d |  |
| 41 |  | Thiết kế website đi kèm sách | 4.5d | 2015-09-04 | 2015-09-16 |  | 3d |  |
| 42 |  | Tạo bản mockup | 2d | 2015-09-16 | 2015-09-18 | 41 | 3d |  |
| 43 | 5 | **Duyệt cùng tác giả** | 46d | 2015-09-23 | 2015-11-26 | 40 | 0d |  |
| 44 |  | Chuẩn bị màu và in ấn | 1d | 2015-09-23 | 2015-09-28 | 36 | 0d |  |
| 45 |  | Gửi tới nhà in màu | 10d | 2015-09-28 | 2015-10-12 | 44 | 0d |  |
| 46 |  | Tạo bản in thử | 30d | 2015-10-15 | 2015-11-26 | 45FS+3d | 0d |  |
| 47 | 6 | **In và giao hàng** | 147.88d? | 2015-04-06 | 2015-10-28 |  | 21d |  |
| 48 |  | Chuẩn Bị Ra Mắt Sách | 5d | 2015-09-28 | 2015-10-05 | 44 | 21d |  |
| 49 |  | Lập kế hoạch ra mắt | 1d | 2015-10-05 | 2015-10-06 | 48 | 21d |  |
| 50 |  | Phân công các thành viên trong nhóm ra mắt | 5d | 2015-10-06 | 2015-10-13 | 49 | 21d |  |
| 51 |  | Hoàn thành bảng câu hỏi tác giả | 1d | 2015-10-13 | 2015-10-14 | 50 | 21d |  |
| 52 |  | Lên lịch phỏng vấn tác giả | 10d | 2015-10-14 | 2015-10-28 | 51 | 21d |  |
| 53 |  | Thiết kế và đặt hàng tài liệu marketing | 1d? | 2015-04-06 | 2015-04-06 |  | 167.88d |  |

## Version 2 (saved 2025-09-22, file Advanced Tracking B_Start.mpp)

Last finish stays 2015-11-26. Complete tasks 0 → 4.

Changed:

| ID | Task | Start | Finish | Duration | Complete | Total float | Other |
| --- | --- | --- | --- | --- | --- | --- | --- |
| 1 | **Họp nhân viên biên tập** | 2012-04-09 → 2012-04-23 A (+14d) | 2012-07-02 → 2015-04-20 (+1022d) | 60.12d → 780.12d | 0% → 15% | 888.75d → 158.75d | baseline start 2012-04-09 → 2015-04-13; baseline finish 2012-07-02 → 2015-07-06 |
| 2 | Editorial staff meeting 1 | 2012-04-09 → 2015-04-13 A (+1099d) | 2012-04-09 → 2015-04-13 A (+1099d) |  | 0% → 100% | 948.75d → none | constraint start no earlier than 2012-04-09 → start no earlier than 2015-04-13; baseline start 2012-04-09 → 2015-04-13; baseline finish 2012-04-09 → 2015-04-13 |
| 3 | Editorial staff meeting 2 | 2012-04-16 → 2015-04-20 A (+1099d) | 2012-04-16 → 2015-04-20 A (+1099d) |  | 0% → 100% | 943.75d → none | constraint start no earlier than 2012-04-16 → start no earlier than 2015-04-20; baseline start 2012-04-16 → 2015-04-20; baseline finish 2012-04-16 → 2015-04-20 |
| 4 | Editorial staff meeting 3 |  |  |  |  |  | baseline start 2012-04-23 → 2015-04-27; baseline finish 2012-04-23 → 2015-04-27 |
| 5 | Editorial staff meeting 4 |  |  |  |  |  | baseline start 2012-04-30 → 2015-05-04; baseline finish 2012-04-30 → 2015-05-04 |
| 6 | Editorial staff meeting 5 |  |  |  |  |  | baseline start 2012-05-07 → 2015-05-11; baseline finish 2012-05-07 → 2015-05-11 |
| 7 | Editorial staff meeting 6 |  |  |  |  |  | baseline start 2012-05-14 → 2015-05-18; baseline finish 2012-05-14 → 2015-05-18 |
| 8 | Editorial staff meeting 7 |  |  |  |  |  | baseline start 2012-05-21 → 2015-05-25; baseline finish 2012-05-21 → 2015-05-25 |
| 9 | Editorial staff meeting 8 |  |  |  |  |  | baseline start 2012-05-28 → 2015-06-01; baseline finish 2012-05-28 → 2015-06-01 |
| 10 | Editorial staff meeting 9 |  |  |  |  |  | baseline start 2012-06-04 → 2015-06-08; baseline finish 2012-06-04 → 2015-06-08 |
| 11 | Editorial staff meeting 10 |  |  |  |  |  | baseline start 2012-06-11 → 2015-06-15; baseline finish 2012-06-11 → 2015-06-15 |
| 12 | Editorial staff meeting 11 |  |  |  |  |  | baseline start 2012-06-18 → 2015-06-22; baseline finish 2012-06-18 → 2015-06-22 |
| 13 | Editorial staff meeting 12 |  |  |  |  |  | baseline start 2012-06-25 → 2015-06-29; baseline finish 2012-06-25 → 2015-06-29 |
| 14 | Editorial staff meeting 13 |  |  |  |  |  | baseline start 2012-07-02 → 2015-07-06; baseline finish 2012-07-02 → 2015-07-06 |
| 15 | **Sự tiếp nhận** | 2015-04-06 A |  |  | 0% → 58% |  |  |
| 16 | Nhận bản thảo | 2015-04-06 A | 2015-04-06 A |  | 0% → 100% | 0d → none |  |
| 17 | Biên tập nội dung | 2015-04-06 A | 2015-04-30 A |  | 0% → 100% | 0d → none |  |
| 18 | Đánh giá tác phẩm gốc | 2015-04-23 A |  |  | 0% → 66% |  |  |
| 19 | Đánh giá tác giả của nội dung biên tập |  |  |  |  |  | was named Đánh giá của tác giả về nội dung biên tập |
| 20 | Tác giả duyệt biên tập nội dung |  |  |  |  |  | was named Bàn giao cho bộ phận biên tập |
| 21 | **Bàn giao cho Ban Biên Tập** |  |  |  |  |  | was named Biên tập |
| 22 | Biên Tập |  |  |  |  |  | was named Sắp xếp bản thảo cho bản sao |
| 23 | Sắp xếp bản thảo để biên tập sao chép |  |  |  |  |  | was named Bản sao |
| 24 | Biên tập sao chép |  |  |  |  |  | was named Đánh giá tác giả về bản sao |
| 25 | Tác giả duyệt biên tập sao chép |  |  |  |  |  | was named Kết hợp bản sao |
| 26 | Tích hợp biên tập sao chép |  |  |  |  |  | was named Bàn giao cho bộ phận sản xuất |
| 27 | **Bàn giao cho Sản Xuất** |  |  |  |  |  | was named Thiết kế và sản xuất |
| 28 | Thiết Kế và Sản Xuất |  |  |  |  |  | was named Thiết lập trang |
| 47 | **In và giao hàng** |  |  |  |  |  | baseline start 2015-04-06 → 2015-09-28 |
| 53 | Thiết kế và đặt hàng tài liệu marketing |  |  |  |  |  | baseline start 2015-04-06 → none; baseline finish 2015-04-06 → none |

## Version 3 (saved 2025-09-22, file Advanced Tracking C_Start.mpp)

Last finish stays 2015-11-26. Complete tasks 4 → 12.

Changed:

| ID | Task | Start | Finish | Duration | Complete | Total float | Other |
| --- | --- | --- | --- | --- | --- | --- | --- |
| 1 | **Họp nhân viên biên tập** | 2012-04-23 A → 2015-04-13 A (+1085d) | 2015-04-20 → 2015-07-06 (+77d) | 780.12d → 60.12d | 15% → 54% | 158.75d → 103.88d |  |
| 4 | Editorial staff meeting 3 | 2012-04-23 → 2015-04-27 A (+1099d) | 2012-04-23 → 2015-04-27 A (+1099d) |  | 0% → 100% | 938.75d → none | constraint start no earlier than 2012-04-23 → start no earlier than 2015-04-27 |
| 5 | Editorial staff meeting 4 | 2012-04-30 → 2015-05-04 A (+1099d) | 2012-04-30 → 2015-05-04 A (+1099d) |  | 0% → 100% | 933.75d → none | constraint start no earlier than 2012-04-30 → start no earlier than 2015-05-04 |
| 6 | Editorial staff meeting 5 | 2012-05-07 → 2015-05-11 A (+1099d) | 2012-05-07 → 2015-05-11 A (+1099d) |  | 0% → 100% | 928.75d → none | constraint start no earlier than 2012-05-07 → start no earlier than 2015-05-11 |
| 7 | Editorial staff meeting 6 | 2012-05-14 → 2015-05-18 A (+1099d) | 2012-05-14 → 2015-05-18 A (+1099d) |  | 0% → 100% | 923.75d → none | constraint start no earlier than 2012-05-14 → start no earlier than 2015-05-18 |
| 8 | Editorial staff meeting 7 | 2012-05-21 → 2015-05-25 A (+1099d) | 2012-05-21 → 2015-05-25 A (+1099d) |  | 0% → 100% | 918.75d → none | constraint start no earlier than 2012-05-21 → start no earlier than 2015-05-25 |
| 9 | Editorial staff meeting 8 | 2012-05-28 → 2015-06-01 (+1099d) | 2012-05-28 → 2015-06-01 (+1099d) |  |  | 913.75d → 128.88d | constraint start no earlier than 2012-05-28 → start no earlier than 2015-06-01 |
| 10 | Editorial staff meeting 9 | 2012-06-04 → 2015-06-08 (+1099d) | 2012-06-04 → 2015-06-08 (+1099d) |  |  | 908.75d → 123.88d | constraint start no earlier than 2012-06-04 → start no earlier than 2015-06-08 |
| 11 | Editorial staff meeting 10 | 2012-06-11 → 2015-06-15 (+1099d) | 2012-06-11 → 2015-06-15 (+1099d) |  |  | 903.75d → 118.88d | constraint start no earlier than 2012-06-11 → start no earlier than 2015-06-15 |
| 12 | Editorial staff meeting 11 | 2012-06-18 → 2015-06-22 (+1099d) | 2012-06-18 → 2015-06-22 (+1099d) |  |  | 898.75d → 113.88d | constraint start no earlier than 2012-06-18 → start no earlier than 2015-06-22 |
| 13 | Editorial staff meeting 12 | 2012-06-25 → 2015-06-29 (+1099d) | 2012-06-25 → 2015-06-29 (+1099d) |  |  | 893.75d → 108.88d | constraint start no earlier than 2012-06-25 → start no earlier than 2015-06-29 |
| 14 | Editorial staff meeting 13 | 2012-07-02 → 2015-07-06 (+1099d) | 2012-07-02 → 2015-07-06 (+1099d) |  |  | 888.75d → 103.88d | constraint start no earlier than 2012-07-02 → start no earlier than 2015-07-06 |
| 15 | **Sự tiếp nhận** |  | 2015-05-25 → 2015-05-26 A (+1d) | 35.5d → 37d | 58% → 100% | 0d → none |  |
| 18 | Đánh giá tác phẩm gốc |  | 2015-05-07 A |  | 66% → 100% | 0d → none |  |
| 19 | Đánh giá tác giả của nội dung biên tập | 2015-05-07 A | 2015-05-25 → 2015-05-26 A (+1d) | 12d → 13.5d | 0% → 100% | 0d → none |  |
| 20 | Tác giả duyệt biên tập nội dung | 2015-05-25 → 2015-05-26 A (+1d) | 2015-05-25 → 2015-05-26 A (+1d) |  | 0% → 100% | 0d → none |  |
| 21 | **Biên tập** | 2015-05-25 → 2015-05-27 (+2d) | 2015-07-03 → 2015-07-07 (+4d) | 29.12d → 29.75d |  |  | was named Bàn giao cho Ban Biên Tập |
| 22 | Sắp xếp bản thảo cho bản sao | 2015-05-25 → 2015-05-27 (+2d) | 2015-06-01 → 2015-06-02 (+1d) | 5.12d → 5d |  |  | was named Biên Tập |
| 23 | Sắp xếp bản thảo để biên tập sao chép | 2015-06-01 → 2015-06-03 (+2d) | 2015-06-16 → 2015-06-18 (+2d) | 11.25d → 11.5d |  |  |  |
| 24 | Biên tập sao chép | 2015-06-16 → 2015-06-19 (+3d) | 2015-06-30 → 2015-07-02 (+2d) |  |  |  |  |
| 25 | Tác giả duyệt biên tập sao chép | 2015-06-26 → 2015-06-30 (+4d) | 2015-07-03 → 2015-07-07 (+4d) |  |  |  |  |
| 26 | Tích hợp biên tập sao chép | 2015-07-03 → 2015-07-07 (+4d) | 2015-07-03 → 2015-07-07 (+4d) |  |  |  |  |
| 27 | **Bàn giao cho Sản Xuất** | 2015-07-03 → 2015-07-07 (+4d) | 2015-09-23 → 2015-09-25 (+2d) |  |  |  |  |
| 28 | Thiết Kế và Sản Xuất | 2015-07-03 → 2015-07-07 (+4d) | 2015-07-24 → 2015-07-28 (+4d) |  |  |  |  |
| 29 | Dàn trang | 2015-07-03 → 2015-07-07 (+4d) | 2015-07-24 → 2015-07-28 (+4d) |  |  |  |  |
| 30 | **Thiết kế minh họa nội dung** | 2015-07-24 → 2015-07-29 (+5d) | 2015-09-04 → 2015-09-08 (+4d) |  |  |  |  |
| 31 | Duyệt trang lần 1 | 2015-07-24 → 2015-07-29 (+5d) | 2015-08-07 → 2015-08-11 (+4d) |  |  |  |  |
| 32 | Hiệu đính và lập chỉ mục | 2015-08-07 → 2015-08-12 (+5d) | 2015-08-21 → 2015-08-25 (+4d) |  |  |  |  |
| 33 | Tích hợp góp ý duyệt trang lần 1 | 2015-08-21 → 2015-08-25 (+4d) | 2015-08-21 → 2015-08-25 (+4d) |  |  |  |  |
| 34 | Gửi trang đã hiệu đính cho Sản Xuất | 2015-08-21 → 2015-08-26 (+5d) | 2015-08-28 → 2015-09-01 (+4d) |  |  |  |  |
| 35 | Nhập chỉnh sửa trang và chỉ mục | 2015-08-28 → 2015-09-02 (+5d) | 2015-09-04 → 2015-09-08 (+4d) |  |  |  |  |
| 36 | **Thiết kế bìa** | 2015-09-04 → 2015-09-09 (+5d) | 2015-09-23 → 2015-09-25 (+2d) |  |  |  |  |
| 37 | Duyệt trang lần 2 | 2015-09-04 → 2015-09-09 (+5d) | 2015-09-15 → 2015-09-17 (+2d) |  |  |  |  |
| 38 | Hiệu đính và duyệt | 2015-09-15 → 2015-09-17 (+2d) | 2015-09-15 → 2015-09-17 (+2d) |  |  |  |  |
| 39 | Gửi trang đã hiệu đính cho Sản Xuất | 2015-09-16 → 2015-09-21 (+5d) | 2015-09-23 → 2015-09-25 (+2d) |  |  |  |  |
| 40 | **Duyệt lần cuối** | 2015-09-04 → 2015-09-09 (+5d) | 2015-09-18 → 2015-09-22 (+4d) |  |  |  |  |
| 41 | Thiết kế website đi kèm sách | 2015-09-04 → 2015-09-09 (+5d) | 2015-09-16 → 2015-09-18 (+2d) |  |  |  |  |
| 42 | Tạo bản mockup | 2015-09-16 → 2015-09-21 (+5d) | 2015-09-18 → 2015-09-22 (+4d) |  |  |  |  |
| 43 | **Duyệt cùng tác giả** | 2015-09-23 → 2015-09-28 (+5d) |  | 46d → 44d |  |  |  |
| 44 | Chuẩn bị màu và in ấn | 2015-09-23 → 2015-09-28 (+5d) |  |  |  |  |  |
| 45 | Gửi tới nhà in màu | 2015-09-28 → 2015-09-29 (+1d) |  |  |  |  |  |
| 46 | Tạo bản in thử | 2015-10-15 → 2015-10-16 (+1d) |  |  |  |  |  |
| 47 | **In và giao hàng** |  |  | 147.88d? → 148d? |  |  |  |
| 48 | Chuẩn Bị Ra Mắt Sách | 2015-09-28 → 2015-09-29 (+1d) |  |  |  |  |  |
| 49 | Lập kế hoạch ra mắt | 2015-10-05 → 2015-10-06 (+1d) |  |  |  |  |  |
| 50 | Phân công các thành viên trong nhóm ra mắt | 2015-10-06 → 2015-10-07 (+1d) |  |  |  |  |  |
| 51 | Hoàn thành bảng câu hỏi tác giả | 2015-10-13 → 2015-10-14 (+1d) |  |  |  |  |  |
| 52 | Lên lịch phỏng vấn tác giả | 2015-10-14 → 2015-10-15 (+1d) |  |  |  |  |  |
